Schedule from MS Project, 2012-10-22 to 2012-12-21, A marks actual dates.

## Calendars

- Standard: Mon-Fri 08:00-12:00, 13:00-17:00; Sat-Sun off.

## Resources

| Resource | Group |
| --- | --- |
| kaiye(叶凯) | 170电商用户体验设计部 |
| williamsli(李伟亮) | 170电商用户体验设计部 |
| howelin(林燕毫) | 170电商用户体验设计部 |
| laserji(姬光) | 170电商用户体验设计部 |
| yoyocasoliu(刘勇) | 170电商用户体验设计部 |
| naniyu(庾晶) | 170电商用户体验设计部 |

## Schedule

| ID | WBS | Task | Type | Duration | Start | Finish | Complete | Remaining | Actual finish | Constraint | Resources | Work | Actual work |
| --- | --- | --- | --- | --- | --- | --- | --- | --- | --- | --- | --- | --- | --- |
| 1 | 1 | **框架搭建** |  | 1.5d | 2012-10-22 A | 2012-10-23 A | 100% |  |  |  |  | 72h | 72h |
| 2 | 1.1 | 服务器配置 | manual | 0.5d | 2012-10-22 A | 2012-10-22 A | 100% |  |  |  | kaiye(叶凯) | 4h | 4h |
| 3 | 1.2 | 数据库设计 | manual | 1d | 2012-10-22 A | 2012-10-22 A | 100% |  |  |  | williamsli(李伟亮); kaiye(叶凯) | 16h | 16h |
| 4 | 1.3 | JSON-API设计 | manual | 1d | 2012-10-22 A | 2012-10-22 A | 100% |  |  |  | williamsli(李伟亮); laserji(姬光) | 16h | 16h |
| 5 | 1.4 | 页面框架设计 | manual | 1.5d | 2012-10-22 A | 2012-10-23 A | 100% |  |  |  | howelin(林燕毫); laserji(姬光); williamsli(李伟亮) | 36h | 36h |
| 7 | 2 | **模块整理** |  | 31d | 2012-10-22 A | 2012-12-03 | 52% | 14.95d |  |  |  | 880h | 232h |
| 8 | 2.1 | 模块收集 | manual | 27d | 2012-10-22 A | 2012-11-27 | 50% | 13.5d |  |  | howelin(林燕毫); kaiye(叶凯); laserji(姬光); naniyu(庾晶); williamsli(李伟亮); yoyocasoliu(刘勇) | 864h | 216h |
| 9 | 2.2 | 模块录入 | milestone, manual | 0d | 2012-10-22 A | 2012-10-24 A | 100% |  |  |  | laserji(姬光); williamsli(李伟亮) |  |  |
| 10 | 2.3 | 列表显示 | manual | 1d | 2012-10-22 A | 2012-10-22 A | 100% |  |  |  | laserji(姬光); williamsli(李伟亮) | 16h | 16h |
| 12 | 3 | **频道管理** |  | 5d | 2012-10-26 A | 2012-11-01 | 100% |  | 2012-10-29 |  |  | 64h | 64h |
| 13 | 3.1 | 频道录入 | manual | 1d | 2012-10-26 A | 2012-10-26 A | 100% |  |  |  | laserji(姬光); williamsli(李伟亮) | 16h | 16h |
| 14 | 3.2 | 列表显示 | manual | 1d | 2012-10-26 A | 2012-10-26 A | 100% |  |  |  | laserji(姬光); williamsli(李伟亮) | 16h | 16h |
| 15 | 3.3 | 关联模块 | manual | 2d | 2012-10-26 A | 2012-10-29 A | 100% |  |  |  | laserji(姬光); williamsli(李伟亮) | 32h | 32h |
| 17 | 4 | **页面管理** |  | 4d | 2012-11-02 A | 2012-11-07 | 50% | 2d |  |  |  | 44h | 24h |
| 18 | 4.1 | 列表显示 | manual | 1d | 2012-11-02 A | 2012-11-02 A | 100% |  |  |  | laserji(姬光); williamsli(李伟亮) | 16h | 16h |
| 19 | 4.2 | 删除页面 | manual | 0.5d | 2012-11-02 A | 2012-11-02 A | 100% |  |  |  | laserji(姬光); williamsli(李伟亮) | 8h | 8h |
| 20 | 4.3 | 查看页面 | manual | 0.5d | 2012-11-02 | 2012-11-02 |  |  |  |  | laserji(姬光) | 4h |  |
| 21 | 4.4 | 下载页面 | manual | 1d | 2012-11-02 | 2012-11-02 |  |  |  |  | laserji(姬光); williamsli(李伟亮) | 16h |  |
| 23 | 5 | **布局管理** |  | 4d | 2012-11-08 | 2012-11-13 |  |  |  |  |  | 60h |  |
| 24 | 5.1 | 列表显示 | manual | 1d | 2012-11-08 | 2012-11-08 |  |  |  |  | laserji(姬光); williamsli(李伟亮) | 16h |  |
| 25 | 5.2 | 新建/编辑布局 | manual | 1.5d | 2012-11-08 | 2012-11-09 |  |  |  |  | kaiye(叶凯); laserji(姬光); williamsli(李伟亮) | 36h |  |
| 26 | 5.3 | 删除布局 | manual | 0.5d | 2012-11-08 | 2012-11-08 |  |  |  |  | laserji(姬光); williamsli(李伟亮) | 8h |  |
| 28 | 6 | **页面设计** |  | 6d | 2012-11-14 A | 2012-11-21 | 33% | 4d |  |  |  | 144h | 48h |
| 29 | 6.1 | 交互设计 | manual | 3d | 2012-11-14 A | 2012-11-16 A | 100% |  |  | start no earlier than 2012-11-14 | yoyocasoliu(刘勇); naniyu(庾晶) | 48h | 48h |
| 30 | 6.2 | 视觉设计 | manual | 3d | 2012-11-19 | 2012-11-21 |  |  |  |  | yoyocasoliu(刘勇); naniyu(庾晶) | 48h |  |
| 31 | 6.3 | 页面重构 | manual | 3d | 2012-11-21 | 2012-11-23 |  |  |  |  | howelin(林燕毫); williamsli(李伟亮) | 48h |  |

| ID | WBS | Task | Type | Duration | Start | Finish | Resources | Work |
| --- | --- | --- | --- | --- | --- | --- | --- | --- |
| 33 | 7 | **分类管理** |  | 1d | 2012-11-23 | 2012-11-23 |  | 16h |
| 34 | 7.1 | 列表显示 | manual | 0.5d | 2012-11-23 | 2012-11-23 | laserji(姬光); williamsli(李伟亮) | 8h |
| 35 | 7.2 | 录入分类 | manual | 0.5d | 2012-11-23 | 2012-11-23 | laserji(姬光); williamsli(李伟亮) | 8h |
| 36 | 8 | V0.2版体验/反馈/完善（里程碑） | manual | 1d | 2012-10-29 | 2012-10-29 | howelin(林燕毫); kaiye(叶凯); laserji(姬光); williamsli(李伟亮); naniyu(庾晶); yoyocasoliu(刘勇) | 48h |
| 38 | 9 | **编辑区（重点）** |  | 26d | 2012-11-16 | 2012-12-21 |  | 248h |
| 40 | 9.1 | **布局选择** |  | 1d | 2012-11-16 | 2012-11-16 |  | 32h |
| 41 | 9.1.1 | 布局读取 | manual | 1d | 2012-11-16 | 2012-11-16 | laserji(姬光); williamsli(李伟亮) | 16h |
| 42 | 9.1.2 | 布局预览 | manual | 1d | 2012-11-16 | 2012-11-16 | kaiye(叶凯); laserji(姬光) | 16h |
| 43 | 9.2 | **模块选择** |  | 1d | 2012-11-16 | 2012-11-16 |  | 88h |
| 44 | 9.2.1 | 频道切换模块 | manual | 1d | 2012-11-16 | 2012-11-16 | laserji(姬光); williamsli(李伟亮) | 16h |
| 45 | 9.2.2 | 模块列表显示 | manual | 1d | 2012-11-16 | 2012-11-16 | laserji(姬光); williamsli(李伟亮) | 16h |
| 46 | 9.2.3 | 模块数据拉取 | manual | 1d | 2012-11-16 | 2012-11-16 | laserji(姬光); williamsli(李伟亮) | 16h |
| 47 | 9.2.4 | 添到到编辑区 | manual | 1d | 2012-11-16 | 2012-11-16 | laserji(姬光) | 8h |
| 48 | 9.2.5 | 模块拖拽效果 | manual | 1d | 2012-11-16 | 2012-11-16 | laserji(姬光) | 8h |
| 49 | 9.2.6 | 模块属性设置 | manual | 1d | 2012-11-16 | 2012-11-16 | howelin(林燕毫); laserji(姬光); williamsli(李伟亮) | 24h |
| 50 | 9.3 | **页面预览** |  | 1d | 2012-11-16 | 2012-11-16 |  | 96h |
| 51 | 9.3.1 | 模块合并 | manual | 1d | 2012-11-16 | 2012-11-16 | laserji(姬光) | 8h |
| 52 | 9.3.2 | 样式合并 | manual | 2d | 2012-11-16 | 2012-11-19 | laserji(姬光) | 16h |
| 53 | 9.3.3 | 实时预览 | manual | 1d | 2012-11-16 | 2012-11-16 | laserji(姬光) | 8h |
| 54 | 9.3.4 | V0.5版体验/反馈/完善（里程碑） | manual | 2d | 2012-11-16 | 2012-11-19 | howelin(林燕毫); kaiye(叶凯); laserji(姬光); williamsli(李伟亮) | 64h |
| 55 | 9.4 | **页面保存** |  | 1d | 2012-11-16 | 2012-11-16 |  | 32h |
| 56 | 9.4.1 | 保存数据库 | manual | 0.5d | 2012-11-16 | 2012-11-16 | laserji(姬光); williamsli(李伟亮) | 8h |
| 57 | 9.4.2 | 生成页面 | manual | 0.5d | 2012-11-16 | 2012-11-16 | howelin(林燕毫); laserji(姬光) | 8h |
| 58 | 9.4.3 | 邮件发送 | manual | 0.5d | 2012-11-16 | 2012-11-16 | howelin(林燕毫); laserji(姬光) | 8h |
| 59 | 9.4.4 | 打包下载 | manual | 0.5d | 2012-11-16 | 2012-11-16 | howelin(林燕毫); laserji(姬光) | 8h |
| 61 | 10 | V1.0版体验/反馈/完善（里程碑） | manual | 2d? | 2012-10-29 | 2012-10-30 | howelin(林燕毫); kaiye(叶凯); laserji(姬光); williamsli(李伟亮) | 64h |
